# GANTT_Formation_V0

How a schedule from MS Project changed from version to version. A marks actual dates.

## Version 1 (saved 2017-10-26, file GANTT_Formation_V0.mpp)

Note of the change: Ressources-maquettes

| ID | WBS | Task | Duration | Start | Finish | Predecessors | Total float |
| --- | --- | --- | --- | --- | --- | --- | --- |
| 1 | 1 | **Formation Android** | 13d? | 2017-10-24 | 2017-11-09 |  | 0d |
| 2 | 1.1 | **Etude de cas** | 3d? | 2017-10-24 | 2017-10-26 |  | 0d |
| 3 |  | Analyse du besoin | 1d? | 2017-10-24 | 2017-10-24 |  | 12d |
| 4 | 1.1.2 | **Réalisation** | 3d? | 2017-10-24 | 2017-10-26 |  | 0d |
| 5 | 1.1.2.1 | **Mise en place de la Base Données** | 3d? | 2017-10-24 | 2017-10-26 |  | 10d |
| 6 |  | Choix du SGBD | 10min | 2017-10-24 | 2017-10-24 |  | 12.98d |
| 7 |  | Réalisation du schéma de Base de données | 1d? | 2017-10-24 | 2017-10-24 |  | 10d |
| 8 |  | Création de la Base de données | 1d? | 2017-10-25 | 2017-10-25 | 7 | 10d |
| 9 |  | Configuration des accès à la Base de données | 1d? | 2017-10-26 | 2017-10-26 | 8 | 10d |
| 10 |  | Mise en place de la redondance de la Base de données | 1d? | 2017-10-24 | 2017-10-24 |  | 12d |
| 11 | 1.1.2.2 | **Mise en place du Back end** | 1d? | 2017-10-24 | 2017-10-24 |  | 12d |
| 12 |  | Choix du Langage de programation | 1d? | 2017-10-24 | 2017-10-24 |  | 12d |
| 13 |  | Choix de l'architecture | 1d? | 2017-10-24 | 2017-10-24 |  | 12d |
| 14 |  | Réalisation des Traitements | 1d? | 2017-10-24 | 2017-10-24 |  | 12d |
| 15 | 1.1.2.3 | **Mise en place de l'appilcation mobile** | 1d? | 2017-10-24 | 2017-10-24 |  | 0d |
| 16 | 1.1.2.3.1 | **Réalisation des maquettes de l'application** | 1d? | 2017-10-24 | 2017-10-24 |  | 12d |
| 17 | 1.1.2.3.1.1 | **Définition de la charte Graphique** | 1d? | 2017-10-24 | 2017-10-24 |  | 12d |
| 18 |  | Choix des couleurs | 10min | 2017-10-24 | 2017-10-24 |  | 12.98d |
| 19 |  | Choix de la police de caractère | 1d? | 2017-10-24 | 2017-10-24 |  | 12d |
| 20 |  | Choix de l'icone de l'application | 10min | 2017-10-24 | 2017-10-24 |  | 12.98d |
| 21 | 1.1.2.3.1.2 | **Réalisation des Mockup correspondant à chaque Activity** | 1d? | 2017-10-24 | 2017-10-24 |  | 12d |
| 22 |  | Inscription | 1d? | 2017-10-24 | 2017-10-24 |  | 12d |
| 23 |  | Connexion | 1d? | 2017-10-24 | 2017-10-24 |  | 12d |
| 24 |  | Recherche de lieu | 1d? | 2017-10-24 | 2017-10-24 |  | 12d |
| 25 |  | Recherche de produit | 1d? | 2017-10-24 | 2017-10-24 |  | 12d |
| 26 |  | Recherche par catégorie | 1d? | 2017-10-24 | 2017-10-24 |  | 12d |
| 27 |  | Saisie d'avis | 1d? | 2017-10-24 | 2017-10-24 |  | 12d |
| 28 |  | Fiche description produit | 1d? | 2017-10-24 | 2017-10-24 |  | 12d |
| 29 |  | Fiche description lieu | 1d? | 2017-10-24 | 2017-10-24 |  | 12d |
| 30 |  | Numériseur de ticket | 1d? | 2017-10-24 | 2017-10-24 |  | 12d |
| 31 |  | Liste de course | 1d? | 2017-10-24 | 2017-10-24 |  | 12d |
| 32 |  | Recherche d'utilisateur | 1d? | 2017-10-24 | 2017-10-24 |  | 12d |
| 33 |  | Blocage d'utilisateur | 1d? | 2017-10-24 | 2017-10-24 |  | 12d |
| 34 |  | Blocage de fonctionnalité | 1d? | 2017-10-24 | 2017-10-24 |  | 12d |
| 35 |  | Analyse de consomation | 1d? | 2017-10-24 | 2017-10-24 |  | 12d |
| 36 | 1.1.2.3.2 | **Réalisation des fonctions** | 1d? | 2017-10-24 | 2017-10-24 |  | 0d |
| 37 | 1.1.2.3.2.1 | **Inscription de l'utilisateur** | 1d? | 2017-10-24 | 2017-10-24 |  | 12d |
| 38 |  | Formulaire | 1d? | 2017-10-24 | 2017-10-24 |  | 20d |
| 39 |  | API Google | 1d? | 2017-10-24 | 2017-10-24 |  | 20d |
| 40 |  | API Facebook | 1d? | 2017-10-24 | 2017-10-24 |  | 20d |
| 41 |  | Connexion de l'utilisateur | 1d? | 2017-10-24 | 2017-10-24 |  | 12d |
| 42 | 1.1.2.3.2.3 | **Numériser un ticket de caisse** | 1d? | 2017-10-24 | 2017-10-24 |  | 0d |
| 43 |  | Ajouter la librairie OpenCV | 1d? | 2017-10-24 | 2017-10-24 |  | 20d |
| 44 |  | Prise en main de la librairie | 1d? | 2017-10-24 | 2017-10-24 |  |  |
| 45 |  | Ajouter la gestion de l'appareil photo | 1d? | 2017-10-24 | 2017-10-24 |  | 20d |
| 46 |  | Extraction des données | 1d? | 2017-10-24 | 2017-10-24 |  | 20d |
| 47 | 1.1.2.3.2.3.5 | **Exploitation des données** | 1d? | 2017-10-24 | 2017-10-24 |  | 12d |
| 48 |  | Regular expression pour la date | 1d? | 2017-10-24 | 2017-10-24 |  | 20d |
| 49 |  | Régular expression pour l'adresse | 1d? | 2017-10-24 | 2017-10-24 |  | 20d |
| 50 |  | Regular expression d'unité | 1d? | 2017-10-24 | 2017-10-24 |  | 20d |
| 51 |  | Expression moyen de Paiement | 1d? | 2017-10-24 | 2017-10-24 |  | 20d |
| 52 |  | Tests | 1d? | 2017-10-24 | 2017-10-24 |  | 20d |
| 53 |  | Liaison avec la base de données | 1d? | 2017-10-24 | 2017-10-24 |  |  |
| 54 |  | Tests | 1d? | 2017-10-24 | 2017-10-24 |  | 20d |
| 55 | 1.1.2.3.2.4 | **Recherche d'un lieu** | 1d? | 2017-10-24 | 2017-10-24 |  | 12d |
| 56 |  | Par adresse | 1d? | 2017-10-24 | 2017-10-24 |  | 20d |
| 57 |  | Par MAP | 1d? | 2017-10-24 | 2017-10-24 |  | 20d |
| 58 |  | Par gamme de prix (qui est le moins cher) | 1d? | 2017-10-24 | 2017-10-24 |  | 20d |
| 59 |  | Saisie d'un Avis | 1d? | 2017-10-24 | 2017-10-24 |  | 20d |
| 60 |  | Fiche description | 1d? | 2017-10-24 | 2017-10-24 |  | 20d |
| 61 |  | Tests | 1d? | 2017-10-24 | 2017-10-24 |  | 20d |
| 62 | 1.1.2.3.2.5 | **Recherche de produit** | 1d? | 2017-10-24 | 2017-10-24 |  | 12d |
| 63 |  | Par nom | 1d? | 2017-10-24 | 2017-10-24 |  | 20d |
| 64 |  | Par marque | 1d? | 2017-10-24 | 2017-10-24 |  | 20d |
| 65 |  | Par catégorie | 1d? | 2017-10-24 | 2017-10-24 |  | 20d |
| 66 |  | Saisie d'un Avis | 1d? | 2017-10-24 | 2017-10-24 |  | 20d |
| 67 |  | Fiche description | 1d? | 2017-10-24 | 2017-10-24 |  | 20d |
| 68 |  | Tests | 1d? | 2017-10-24 | 2017-10-24 |  | 20d |
| 69 | 1.1.2.3.2.6 | **Liste de course** | 1d? | 2017-10-24 | 2017-10-24 |  | 12d |
| 70 |  | Choix du lieu | 1d? | 2017-10-24 | 2017-10-24 |  | 12d |

| ID | WBS | Task | Duration | Start | Finish | Predecessors | Total float |
| --- | --- | --- | --- | --- | --- | --- | --- |
| 71 |  | Proposition de lieu | 1d | 2017-10-24 | 2017-10-24 |  | 12d |
| 72 | 1.1.2.3.2.6.3 | **Ajout** | 1d? | 2017-10-24 | 2017-10-24 |  | 12d |
| 73 |  | Proposer des promotions | 1d? | 2017-10-24 | 2017-10-24 |  | 12d |
| 74 |  | Proposition des produits | 1d? | 2017-10-24 | 2017-10-24 |  | 12d |
| 75 |  | Choix du produit | 1d? | 2017-10-24 | 2017-10-24 |  | 12d |
| 76 |  | Lecture d'un avis | 1d? | 2017-10-24 | 2017-10-24 |  | 12d |
| 77 |  | Supression | 1d? | 2017-10-24 | 2017-10-24 |  | 12d |
| 78 |  | Quantité | 1d? | 2017-10-24 | 2017-10-24 |  | 12d |
| 79 |  | Enregistrer sous | 1d? | 2017-10-24 | 2017-10-24 |  | 12d |
| 80 |  | Programmer une alerte | 1d? | 2017-10-24 | 2017-10-24 |  | 12d |
| 81 |  | Définir une date | 1d? | 2017-10-24 | 2017-10-24 |  | 12d |
| 82 |  | Prix total | 1d? | 2017-10-24 | 2017-10-24 |  | 12d |
| 83 |  | Tests | 1d? | 2017-10-24 | 2017-10-24 |  | 12d |
| 84 |  | Blocage d'un utilisateur | 1d? | 2017-10-24 | 2017-10-24 |  | 12d |
| 85 |  | Blocage d'une fonctionnalité | 1d? | 2017-10-24 | 2017-10-24 |  | 12d |
| 86 |  | Analyse de consomation | 1d? | 2017-10-24 | 2017-10-24 |  | 12d |
| 87 |  | Dépense par mois/annuel Catégorie | 1d? | 2017-10-24 | 2017-10-24 |  | 12d |
| 88 |  | Comparaison des promotions au mois | 1d? | 2017-10-24 | 2017-10-24 |  | 12d |
| 89 |  | Tests | 1d? | 2017-10-24 | 2017-10-24 |  | 12d |
| 90 |  | Alerte produit | 1d? | 2017-10-24 | 2017-10-24 |  | 12d |
| 91 |  | Tests d'intégration | 1d? | 2017-10-24 | 2017-10-24 |  | 12d |
| 92 |  | Tests de validation | 1d? | 2017-10-24 | 2017-10-24 |  | 12d |
| 93 |  | Déploiement sur le store | 1d? | 2017-10-24 | 2017-10-24 |  | 12d |
| 94 | 1.2 | **Réalisation des cours** | 13d | 2017-10-24 | 2017-11-09 |  | 0d |
| 95 | 1.2.1 | **Ecriture** | 8d | 2017-10-24 | 2017-11-02 |  | 0d |
| 96 |  | Java/Android | 7d | 2017-10-24 | 2017-11-01 |  | 1d |
| 97 |  | l'étude de cas | 8d | 2017-10-24 | 2017-11-02 |  | 0d |
| 98 |  | Librairie OpenCV | 3d | 2017-10-24 | 2017-10-26 |  | 5d |
| 99 |  | Les tests | 4d | 2017-10-24 | 2017-10-27 |  | 4d |
| 100 | 1.2.2 | **Relecture** | 1d | 2017-11-03 | 2017-11-03 | 95 | 0d |
| 101 |  | Java/Android | 1d | 2017-11-03 | 2017-11-03 |  | 0d |
| 102 |  | l'étude de cas | 1d | 2017-11-03 | 2017-11-03 |  | 0d |
| 103 |  | Librairie OpenCV | 1d | 2017-11-03 | 2017-11-03 |  | 0d |
| 104 |  | Les tests | 1d | 2017-11-03 | 2017-11-03 |  | 0d |
| 105 | 1.2.3 | **Mise en commun** | 1d | 2017-11-06 | 2017-11-06 | 100 | 0d |
| 106 |  | Java/Android | 1d | 2017-11-06 | 2017-11-06 |  | 0d |
| 107 |  | l'étude de cas | 1d | 2017-11-06 | 2017-11-06 |  | 0d |
| 108 |  | Librairie OpenCV | 1d | 2017-11-06 | 2017-11-06 |  | 0d |
| 109 |  | Les tests | 1d | 2017-11-06 | 2017-11-06 |  | 0d |
| 110 | 1.2.4 | **Ajustement** | 2d | 2017-11-07 | 2017-11-08 | 105 | 0d |
| 111 |  | Java/Android | 2d | 2017-11-07 | 2017-11-08 |  | 0d |
| 112 |  | l'étude de cas | 2d | 2017-11-07 | 2017-11-08 |  | 0d |
| 113 |  | Librairie OpenCV | 2d | 2017-11-07 | 2017-11-08 |  | 0d |
| 114 |  | Les tests | 2d | 2017-11-07 | 2017-11-08 |  | 0d |
| 115 |  | Essai de présentation | 1d | 2017-11-09 | 2017-11-09 | 110 | 0d |
| 116 |  | Formation des clients finaux | 1d | 2017-10-24 | 2017-10-24 |  | 12d |

## Version 2 (saved 2017-10-26, file GANTT_Formation_V1.mpp)

Note of the change: Commit de phase d'initialisation

Last finish 2017-11-09 → 2018-01-04 (+56d).

Changed:

| ID | Task | Start | Finish | Duration | Total float | Predecessors |
| --- | --- | --- | --- | --- | --- | --- |
| 1 | **Formation Android** |  | 2017-11-09 → 2018-01-04 (+56d) | 13d? → 53d? |  |  |
| 2 | **Etude de cas** |  | 2017-10-26 → 2018-01-04 (+70d) | 3d? → 53d? |  |  |
| 4 | **Réalisation** | 2017-10-24 → 2017-10-25 (+1d) | 2017-10-26 → 2018-01-02 (+68d) | 3d? → 50d? |  | none → 3 |
| 5 | **Mise en place de la Base Données** | 2017-10-24 → 2017-10-25 (+1d) | 2017-10-26 → 2017-10-27 (+1d) |  | 10d → 47d |  |
| 6 | Choix du SGBD | 2017-10-24 → 2017-10-25 (+1d) | 2017-10-24 → 2017-10-25 (+1d) |  | 12.98d → 49.98d |  |
| 7 | Réalisation du schéma de Base de données | 2017-10-24 → 2017-10-25 (+1d) | 2017-10-24 → 2017-10-25 (+1d) |  | 10d → 47d |  |
| 8 | Création de la Base de données | 2017-10-25 → 2017-10-26 (+1d) | 2017-10-25 → 2017-10-26 (+1d) |  | 10d → 47d |  |
| 9 | Configuration des accès à la Base de données | 2017-10-26 → 2017-10-27 (+1d) | 2017-10-26 → 2017-10-27 (+1d) |  | 10d → 47d |  |
| 10 | Mise en place de la redondance de la Base de données | 2017-10-24 → 2017-10-25 (+1d) | 2017-10-24 → 2017-10-25 (+1d) |  | 12d → 49d |  |
| 11 | **Mise en place du Back end** | 2017-10-24 → 2017-10-25 (+1d) | 2017-10-24 → 2018-01-02 (+70d) | 1d? → 50d? | 12d → 0d |  |
| 12 | Choix du Langage de programation | 2017-10-24 → 2017-10-25 (+1d) | 2017-10-24 → 2017-10-25 (+1d) | 1d? → 0.48d? | 12d → 49.52d |  |
| 13 | Choix de l'architecture | 2017-10-24 → 2017-10-25 (+1d) | 2017-10-24 → 2017-10-25 (+1d) | 1d? → 1d | 12d → 49d |  |
| 14 | Réalisation des Traitements | 2017-10-24 → 2017-10-25 (+1d) | 2017-10-24 → 2018-01-02 (+70d) | 1d? → 50d | 12d → 0d |  |
| 15 | **Mise en place de l'appilcation mobile** | 2017-10-24 → 2017-10-25 (+1d) | 2017-10-24 → 2017-10-26 (+2d) | 1d? → 2d? |  |  |
| 16 | **Réalisation des maquettes de l'application** | 2017-10-24 → 2017-10-25 (+1d) | 2017-10-24 → 2017-10-26 (+2d) | 1d? → 1.07d? | 12d → 48.93d |  |
| 17 | **Définition de la charte Graphique** | 2017-10-24 → 2017-10-25 (+1d) | 2017-10-24 → 2017-10-25 (+1d) | 1d? → 0.07d | 12d → 48.93d |  |
| 18 | Choix des couleurs | 2017-10-24 → 2017-10-25 (+1d) | 2017-10-24 → 2017-10-25 (+1d) |  | 12.98d → 48.98d |  |
| 19 | Choix de la police de caractère | 2017-10-24 → 2017-10-25 (+1d) | 2017-10-24 → 2017-10-25 (+1d) | 1d? → 30min | 12d → 48.93d |  |
| 20 | Choix de l'icone de l'application | 2017-10-24 → 2017-10-25 (+1d) | 2017-10-24 → 2017-10-25 (+1d) |  | 12.98d → 48.98d |  |
| 21 | **Réalisation des Mockup correspondant à chaque Activity** | 2017-10-24 → 2017-10-25 (+1d) | 2017-10-24 → 2017-10-26 (+2d) |  | 12d → 48.93d | none → 17 |
| 22 | Inscription | 2017-10-24 → 2017-10-25 (+1d) | 2017-10-24 → 2017-10-26 (+2d) |  | 12d → 48.93d |  |
| 23 | Connexion | 2017-10-24 → 2017-10-25 (+1d) | 2017-10-24 → 2017-10-26 (+2d) |  | 12d → 48.93d |  |
| 24 | Recherche de lieu | 2017-10-24 → 2017-10-25 (+1d) | 2017-10-24 → 2017-10-26 (+2d) |  | 12d → 48.93d |  |
| 25 | Recherche de produit | 2017-10-24 → 2017-10-25 (+1d) | 2017-10-24 → 2017-10-26 (+2d) |  | 12d → 48.93d |  |
| 26 | Recherche par catégorie | 2017-10-24 → 2017-10-25 (+1d) | 2017-10-24 → 2017-10-26 (+2d) |  | 12d → 48.93d |  |
| 27 | Saisie d'avis | 2017-10-24 → 2017-10-25 (+1d) | 2017-10-24 → 2017-10-26 (+2d) |  | 12d → 48.93d |  |
| 28 | Fiche description produit | 2017-10-24 → 2017-10-25 (+1d) | 2017-10-24 → 2017-10-26 (+2d) |  | 12d → 48.93d |  |
| 29 | Fiche description lieu | 2017-10-24 → 2017-10-25 (+1d) | 2017-10-24 → 2017-10-26 (+2d) |  | 12d → 48.93d |  |
| 30 | Numériseur de ticket | 2017-10-24 → 2017-10-25 (+1d) | 2017-10-24 → 2017-10-26 (+2d) |  | 12d → 48.93d |  |
| 31 | Liste de course | 2017-10-24 → 2017-10-25 (+1d) | 2017-10-24 → 2017-10-26 (+2d) |  | 12d → 48.93d |  |
| 32 | Recherche d'utilisateur | 2017-10-24 → 2017-10-25 (+1d) | 2017-10-24 → 2017-10-26 (+2d) |  | 12d → 48.93d |  |
| 33 | Blocage d'utilisateur | 2017-10-24 → 2017-10-25 (+1d) | 2017-10-24 → 2017-10-26 (+2d) |  | 12d → 48.93d |  |
| 34 | Blocage de fonctionnalité | 2017-10-24 → 2017-10-25 (+1d) | 2017-10-24 → 2017-10-26 (+2d) |  | 12d → 48.93d |  |
| 35 | Analyse de consomation | 2017-10-24 → 2017-10-25 (+1d) | 2017-10-24 → 2017-10-26 (+2d) |  | 12d → 48.93d |  |
| 36 | **Réalisation des fonctions** | 2017-10-24 → 2017-10-25 (+1d) | 2017-10-24 → 2017-10-25 (+1d) |  |  |  |
| 37 | **Inscription de l'utilisateur** | 2017-10-24 → 2017-10-25 (+1d) | 2017-10-24 → 2017-10-25 (+1d) |  | 12d → 48d |  |
| 38 | Formulaire | 2017-10-24 → 2017-10-25 (+1d) | 2017-10-24 → 2017-10-25 (+1d) |  | 20d → 48d |  |
| 39 | API Google | 2017-10-24 → 2017-10-25 (+1d) | 2017-10-24 → 2017-10-25 (+1d) |  | 20d → 48d |  |
| 40 | API Facebook | 2017-10-24 → 2017-10-25 (+1d) | 2017-10-24 → 2017-10-25 (+1d) |  | 20d → 48d |  |
| 41 | Connexion de l'utilisateur | 2017-10-24 → 2017-10-25 (+1d) | 2017-10-24 → 2017-10-25 (+1d) |  | 12d → 48d |  |
| 42 | **Numériser un ticket de caisse** | 2017-10-24 → 2017-10-25 (+1d) | 2017-10-24 → 2017-10-25 (+1d) |  |  |  |
| 43 | Ajouter la librairie OpenCV | 2017-10-24 → 2017-10-25 (+1d) | 2017-10-24 → 2017-10-25 (+1d) |  | 20d → 48d |  |
| 44 | Prise en main de la librairie | 2017-10-24 → 2017-10-25 (+1d) | 2017-10-24 → 2017-10-25 (+1d) |  |  |  |
| 45 | Ajouter la gestion de l'appareil photo | 2017-10-24 → 2017-10-25 (+1d) | 2017-10-24 → 2017-10-25 (+1d) |  | 20d → 48d |  |
| 46 | Extraction des données | 2017-10-24 → 2017-10-25 (+1d) | 2017-10-24 → 2017-10-25 (+1d) |  | 20d → 48d |  |
| 47 | **Exploitation des données** | 2017-10-24 → 2017-10-25 (+1d) | 2017-10-24 → 2017-10-25 (+1d) |  | 12d → 48d |  |
| 48 | Regular expression pour la date | 2017-10-24 → 2017-10-25 (+1d) | 2017-10-24 → 2017-10-25 (+1d) |  | 20d → 48d |  |
| 49 | Régular expression pour l'adresse | 2017-10-24 → 2017-10-25 (+1d) | 2017-10-24 → 2017-10-25 (+1d) |  | 20d → 48d |  |
| 50 | Regular expression d'unité | 2017-10-24 → 2017-10-25 (+1d) | 2017-10-24 → 2017-10-25 (+1d) |  | 20d → 48d |  |
| 51 | Expression moyen de Paiement | 2017-10-24 → 2017-10-25 (+1d) | 2017-10-24 → 2017-10-25 (+1d) |  | 20d → 48d |  |
| 52 | Tests | 2017-10-24 → 2017-10-25 (+1d) | 2017-10-24 → 2017-10-25 (+1d) |  | 20d → 48d |  |
| 53 | Liaison avec la base de données | 2017-10-24 → 2017-10-25 (+1d) | 2017-10-24 → 2017-10-25 (+1d) |  |  |  |
| 54 | Tests | 2017-10-24 → 2017-10-25 (+1d) | 2017-10-24 → 2017-10-25 (+1d) |  | 20d → 48d |  |
| 55 | **Recherche d'un lieu** | 2017-10-24 → 2017-10-25 (+1d) | 2017-10-24 → 2017-10-25 (+1d) |  | 12d → 48d |  |
| 56 | Par adresse | 2017-10-24 → 2017-10-25 (+1d) | 2017-10-24 → 2017-10-25 (+1d) |  | 20d → 48d |  |
| 57 | Par MAP | 2017-10-24 → 2017-10-25 (+1d) | 2017-10-24 → 2017-10-25 (+1d) |  | 20d → 48d |  |
| 58 | Par gamme de prix (qui est le moins cher) | 2017-10-24 → 2017-10-25 (+1d) | 2017-10-24 → 2017-10-25 (+1d) |  | 20d → 48d |  |
| 59 | Saisie d'un Avis | 2017-10-24 → 2017-10-25 (+1d) | 2017-10-24 → 2017-10-25 (+1d) |  | 20d → 48d |  |
| 60 | Fiche description | 2017-10-24 → 2017-10-25 (+1d) | 2017-10-24 → 2017-10-25 (+1d) |  | 20d → 48d |  |
| 61 | Tests | 2017-10-24 → 2017-10-25 (+1d) | 2017-10-24 → 2017-10-25 (+1d) |  | 20d → 48d |  |
| 62 | **Recherche de produit** | 2017-10-24 → 2017-10-25 (+1d) | 2017-10-24 → 2017-10-25 (+1d) |  | 12d → 48d |  |
| 63 | Par nom | 2017-10-24 → 2017-10-25 (+1d) | 2017-10-24 → 2017-10-25 (+1d) |  | 20d → 48d |  |
| 64 | Par marque | 2017-10-24 → 2017-10-25 (+1d) | 2017-10-24 → 2017-10-25 (+1d) |  | 20d → 48d |  |
| 65 | Par catégorie | 2017-10-24 → 2017-10-25 (+1d) | 2017-10-24 → 2017-10-25 (+1d) |  | 20d → 48d |  |
| 66 | Saisie d'un Avis | 2017-10-24 → 2017-10-25 (+1d) | 2017-10-24 → 2017-10-25 (+1d) |  | 20d → 48d |  |
| 67 | Fiche description | 2017-10-24 → 2017-10-25 (+1d) | 2017-10-24 → 2017-10-25 (+1d) |  | 20d → 48d |  |
| 68 | Tests | 2017-10-24 → 2017-10-25 (+1d) | 2017-10-24 → 2017-10-25 (+1d) |  | 20d → 48d |  |
| 69 | **Liste de course** | 2017-10-24 → 2017-10-25 (+1d) | 2017-10-24 → 2017-10-25 (+1d) |  | 12d → 48d |  |
| 70 | Choix du lieu | 2017-10-24 → 2017-10-25 (+1d) | 2017-10-24 → 2017-10-25 (+1d) |  | 12d → 48d |  |
| 71 | Proposition de lieu | 2017-10-24 → 2017-10-25 (+1d) | 2017-10-24 → 2017-10-25 (+1d) |  | 12d → 48d |  |

| ID | Task | Start | Finish | Total float | Predecessors |
| --- | --- | --- | --- | --- | --- |
| 72 | **Ajout** | 2017-10-24 → 2017-10-25 (+1d) | 2017-10-24 → 2017-10-25 (+1d) | 12d → 48d |  |
| 73 | Proposer des promotions | 2017-10-24 → 2017-10-25 (+1d) | 2017-10-24 → 2017-10-25 (+1d) | 12d → 48d |  |
| 74 | Proposition des produits | 2017-10-24 → 2017-10-25 (+1d) | 2017-10-24 → 2017-10-25 (+1d) | 12d → 48d |  |
| 75 | Choix du produit | 2017-10-24 → 2017-10-25 (+1d) | 2017-10-24 → 2017-10-25 (+1d) | 12d → 48d |  |
| 76 | Lecture d'un avis | 2017-10-24 → 2017-10-25 (+1d) | 2017-10-24 → 2017-10-25 (+1d) | 12d → 48d |  |
| 77 | Supression | 2017-10-24 → 2017-10-25 (+1d) | 2017-10-24 → 2017-10-25 (+1d) | 12d → 48d |  |
| 78 | Quantité | 2017-10-24 → 2017-10-25 (+1d) | 2017-10-24 → 2017-10-25 (+1d) | 12d → 48d |  |
| 79 | Enregistrer sous | 2017-10-24 → 2017-10-25 (+1d) | 2017-10-24 → 2017-10-25 (+1d) | 12d → 48d |  |
| 80 | Programmer une alerte | 2017-10-24 → 2017-10-25 (+1d) | 2017-10-24 → 2017-10-25 (+1d) | 12d → 48d |  |
| 81 | Définir une date | 2017-10-24 → 2017-10-25 (+1d) | 2017-10-24 → 2017-10-25 (+1d) | 12d → 48d |  |
| 82 | Prix total | 2017-10-24 → 2017-10-25 (+1d) | 2017-10-24 → 2017-10-25 (+1d) | 12d → 48d |  |
| 83 | Tests | 2017-10-24 → 2017-10-25 (+1d) | 2017-10-24 → 2017-10-25 (+1d) | 12d → 48d |  |
| 84 | Blocage d'un utilisateur | 2017-10-24 → 2017-10-25 (+1d) | 2017-10-24 → 2017-10-25 (+1d) | 12d → 48d |  |
| 85 | Blocage d'une fonctionnalité | 2017-10-24 → 2017-10-25 (+1d) | 2017-10-24 → 2017-10-25 (+1d) | 12d → 48d |  |
| 86 | Analyse de consomation | 2017-10-24 → 2017-10-25 (+1d) | 2017-10-24 → 2017-10-25 (+1d) | 12d → 48d |  |
| 87 | Dépense par mois/annuel Catégorie | 2017-10-24 → 2017-10-25 (+1d) | 2017-10-24 → 2017-10-25 (+1d) | 12d → 48d |  |
| 88 | Comparaison des promotions au mois | 2017-10-24 → 2017-10-25 (+1d) | 2017-10-24 → 2017-10-25 (+1d) | 12d → 48d |  |
| 89 | Tests | 2017-10-24 → 2017-10-25 (+1d) | 2017-10-24 → 2017-10-25 (+1d) | 12d → 48d |  |
| 90 | Alerte produit | 2017-10-24 → 2017-10-25 (+1d) | 2017-10-24 → 2017-10-25 (+1d) | 12d → 48d |  |
| 91 | Tests d'intégration | 2017-10-24 → 2017-10-26 (+2d) | 2017-10-24 → 2017-10-26 (+2d) | 12d → 48d | none → 36 |
| 92 | Tests de validation | 2017-10-24 → 2018-01-03 (+71d) | 2017-10-24 → 2018-01-03 (+71d) | 12d → 0d | none → 4 |
| 93 | Déploiement sur le store | 2017-10-24 → 2018-01-04 (+72d) | 2017-10-24 → 2018-01-04 (+72d) | 12d → 0d | none → 92 |

## Version 3 (saved 2017-11-16, file GANTT_Formation_V2.mpp)

Note of the change: GANT

Last finish 2018-01-04 → 2018-06-07 (+154d).

Added:

| ID | Task | Duration | Start | Finish | Predecessors | Resources |
| --- | --- | --- | --- | --- | --- | --- |
| 80 | Envoyer par email | 4h | 2018-01-01 14:20 | 2018-01-02 09:20 | 72 | Michel [30%] |

Changed:

| ID | Task | Start | Finish | Duration | Total float | Predecessors | Other |
| --- | --- | --- | --- | --- | --- | --- | --- |
| 1 | **Formation Android** | 2017-10-24 → 2017-10-24 09:00 | 2018-01-04 → 2018-06-07 09:10 (+154d) | 53d? → 162.02d? |  |  |  |
| 2 | **Etude de cas** | 2017-10-24 → 2017-10-24 09:00 | 2018-01-04 → 2018-04-26 11:50 (+112d) | 53d? → 132.4d? | 0d → 0.55d |  |  |
| 3 | Analyse du besoin | 2017-10-24 → 2017-10-24 09:00 | 2017-10-24 → 2017-11-24 11:20 (+31d) | 1d? → 23.33d? | 0d → 0.55d |  | resources none → Céline [30%]; Michel [30%] |
| 4 | **Réalisation** | 2017-10-25 → 2017-11-24 11:20 (+30d) | 2018-01-02 → 2018-04-19 10:50 (+107d) | 50d? → 103.93d | 0d → 0.55d |  |  |
| 5 | **Mise en place de la Base Données** | 2017-10-25 → 2017-11-24 11:20 (+30d) | 2017-10-27 → 2017-11-28 10:30 (+32d) | 3d? → 1.88d | 47d → 0.55d |  |  |
| 6 | Choix du SGBD | 2017-10-25 → 2017-11-24 11:20 (+30d) | 2017-10-25 → 2017-11-24 11:30 (+30d) |  | 49.98d → 0.55d |  |  |
| 7 | Réalisation du schéma de Base de données | 2017-10-25 → 2017-11-24 11:30 (+30d) | 2017-10-25 → 2017-11-27 11:30 (+33d) | 1d? → 1d | 47d → 0.55d | none → 6 |  |
| 8 | Création de la Base de données | 2017-10-26 → 2017-11-27 11:30 (+32d) | 2017-10-26 → 2017-11-27 16:30 (+32d) | 1d? → 3h | 47d → 0.55d |  |  |
| 9 | Configuration des accès à la Base de données | 2017-10-27 → 2017-11-27 16:30 (+31d) | 2017-10-27 → 2017-11-27 17:30 (+31d) | 1d? → 1h | 47d → 0.55d |  |  |
| 10 | Mise en place de la redondance de la Base de données | 2017-10-25 → 2017-11-27 17:30 (+33d) | 2017-10-25 → 2017-11-28 10:30 (+34d) | 1d? → 2h | 49d → 0.55d | none → 9 |  |
| 11 | **Mise en place du Back end** | 2017-10-25 → 2017-11-28 10:30 (+34d) | 2018-01-02 → 2018-04-19 10:50 (+107d) | 50d? → 102.05d | 0d → 0.55d | none → 5, 21 | resources Céline [30%] → Céline [15%]; Michel [15%] |
| 12 | Choix du Langage de programation | 2017-10-25 → 2017-11-28 10:30 (+34d) | 2017-10-25 → 2017-11-28 10:50 (+34d) | 0.48d? → 20min | 49.52d → 0.55d |  | resources Céline [30%] → Céline [15%] |
| 13 | Choix de l'architecture | 2017-10-25 → 2017-11-28 10:50 (+34d) | 2017-10-25 → 2017-11-30 10:50 (+36d) | 1d → 2d | 49d → 0.55d | none → 12 | resources Céline [30%] → Céline [15%] |
| 14 | Réalisation des Traitements | 2017-10-25 → 2017-11-30 10:50 (+36d) | 2018-01-02 → 2018-04-19 10:50 (+107d) | 50d → 100d | 0d → 0.55d | none → 13 | resources Céline [30%] → Céline [15%] |
| 15 | **Mise en place de l'appilcation mobile** | 2017-10-25 → 2017-11-24 11:20 (+30d) | 2017-10-26 → 2018-02-06 17:20 (+103d) | 2d? → 52.57d | 0d → 1.36d |  |  |
| 16 | **Réalisation des maquettes de l'application** | 2017-10-25 → 2017-11-24 11:20 (+30d) | 2017-10-26 → 2017-11-27 11:50 (+32d) | 1.07d? → 1.07d | 48.93d → 1.36d |  |  |
| 17 | **Définition de la charte Graphique** | 2017-10-25 → 2017-11-24 11:20 (+30d) | 2017-10-25 → 2017-11-24 11:50 (+30d) |  | 48.93d → 1.36d |  |  |
| 18 | Choix des couleurs | 2017-10-25 → 2017-11-24 11:20 (+30d) | 2017-10-25 → 2017-11-24 11:30 (+30d) |  | 48.98d → 1.36d |  | resources none → Céline [30%] |
| 19 | Choix de la police de caractère | 2017-10-25 → 2017-11-24 11:30 (+30d) | 2017-10-25 → 2017-11-24 11:40 (+30d) | 30min → 10min | 48.93d → 1.36d | none → 18 | resources none → Michel [30%]; Céline [30%] |
| 20 | Choix de l'icone de l'application | 2017-10-25 → 2017-11-24 11:40 (+30d) | 2017-10-25 → 2017-11-24 11:50 (+30d) |  | 48.98d → 1.36d | none → 19 | resources none → Michel [30%] |
| 21 | **Réalisation des Mockup correspondant à chaque Activity** | 2017-10-25 → 2017-11-24 11:50 (+30d) | 2017-10-26 → 2017-11-27 11:50 (+32d) | 1d? → 1d | 48.93d → 1.36d |  |  |
| 22 | Inscription | 2017-10-25 → 2017-11-24 11:50 (+30d) | 2017-10-26 → 2017-11-24 14:50 (+29d) | 1d? → 1h | 48.93d → 1.36d |  |  |
| 23 | Connexion | 2017-10-25 → 2017-11-24 14:50 (+30d) | 2017-10-26 → 2017-11-24 15:50 (+29d) | 1d? → 0.14d | 48.93d → 1.36d | none → 22 |  |
| 24 | Recherche de lieu | 2017-10-25 → 2017-11-24 15:50 (+30d) | 2017-10-26 → 2017-11-24 16:50 (+29d) | 1d? → 0.14d | 48.93d → 1.36d | none → 23 |  |
| 25 | Recherche de produit | 2017-10-25 → 2017-11-24 11:50 (+30d) | 2017-10-26 → 2017-11-24 14:50 (+29d) | 1d? → 0.14d | 48.93d → 1.36d |  |  |
| 26 | Recherche par catégorie | 2017-10-25 → 2017-11-24 14:50 (+30d) | 2017-10-26 → 2017-11-24 15:50 (+29d) | 1d? → 0.14d | 48.93d → 1.36d | none → 25 |  |
| 27 | Saisie d'avis | 2017-10-25 → 2017-11-24 16:50 (+30d) | 2017-10-26 → 2017-11-24 17:50 (+29d) | 1d? → 0.14d | 48.93d → 1.36d | none → 24 |  |
| 28 | Fiche description produit | 2017-10-25 → 2017-11-24 15:50 (+30d) | 2017-10-26 → 2017-11-24 16:50 (+29d) | 1d? → 0.14d | 48.93d → 1.36d | none → 26 |  |
| 29 | Fiche description lieu | 2017-10-25 → 2017-11-24 16:50 (+30d) | 2017-10-26 → 2017-11-24 17:50 (+29d) | 1d? → 0.14d | 48.93d → 1.36d | none → 28 |  |
| 30 | Numériseur de ticket | 2017-10-25 → 2017-11-24 17:50 (+30d) | 2017-10-26 → 2017-11-27 09:50 (+32d) | 1d? → 0.14d | 48.93d → 1.36d | none → 27 |  |
| 31 | Liste de course | 2017-10-25 → 2017-11-27 09:50 (+33d) | 2017-10-26 → 2017-11-27 10:50 (+32d) | 1d? → 0.14d | 48.93d → 1.36d | none → 30 |  |
| 32 | Recherche d'utilisateur | 2017-10-25 → 2017-11-24 17:50 (+30d) | 2017-10-26 → 2017-11-27 09:50 (+32d) | 1d? → 0.14d | 48.93d → 1.36d | none → 29 |  |
| 33 | Blocage d'utilisateur | 2017-10-25 → 2017-11-27 09:50 (+33d) | 2017-10-26 → 2017-11-27 10:50 (+32d) | 1d? → 0.14d | 48.93d → 1.36d | none → 32 |  |
| 34 | Blocage de fonctionnalité | 2017-10-25 → 2017-11-27 10:50 (+33d) | 2017-10-26 → 2017-11-27 11:50 (+32d) | 1d? → 0.14d | 48.93d → 1.36d | none → 33 |  |
| 35 | Analyse de consomation | 2017-10-25 → 2017-11-27 10:50 (+33d) | 2017-10-26 → 2017-11-27 11:50 (+32d) | 1d? → 0.14d | 48.93d → 1.36d | none → 31 |  |
| 36 | **Réalisation des fonctions** | 2017-10-25 → 2017-11-24 11:20 (+30d) | 2017-10-25 → 2018-01-30 17:20 (+97d) | 1d? → 47.57d | 0d → 51.9d |  |  |
| 37 | **Inscription de l'utilisateur** | 2017-10-25 → 2017-11-24 11:20 (+30d) | 2017-10-25 → 2017-11-27 15:20 (+33d) | 1d? → 1.29d | 48d → 51.9d |  |  |
| 38 | Formulaire | 2017-10-25 → 2017-11-24 11:20 (+30d) | 2017-10-25 → 2017-11-24 16:20 (+30d) | 1d? → 3h | 48d → 51.9d |  | resources none → Michel [30%] |
| 39 | API Google | 2017-10-25 → 2017-11-24 16:20 (+30d) | 2017-10-25 → 2017-11-27 10:20 (+33d) | 1d? → 3h | 48d → 51.9d | none → 38 | resources none → Michel [30%] |
| 40 | API Facebook | 2017-10-25 → 2017-11-27 10:20 (+33d) | 2017-10-25 → 2017-11-27 15:20 (+33d) | 1d? → 3h | 48d → 51.9d | none → 39 | resources none → Michel [30%] |
| 41 | Connexion de l'utilisateur | 2017-10-25 → 2017-11-27 15:20 (+33d) | 2017-10-25 → 2017-11-28 09:20 (+34d) | 1d? → 3h | 48d → 97.76d | none → 40 | resources none → Michel [30%] |
| 42 | **Numériser un ticket de caisse** | 2017-10-25 → 2017-11-27 15:20 (+33d) | 2017-10-25 → 2017-12-14 17:20 (+50d) | 1d? → 13.29d | 0d → 51.9d | none → 37 |  |
| 43 | Ajouter la librairie OpenCV | 2017-10-25 → 2017-11-27 15:20 (+33d) | 2017-10-25 → 2017-11-28 10:20 (+34d) | 1d? → 4h | 48d → 51.9d |  | resources none → Céline [30%] |
| 44 | Prise en main de la librairie | 2017-10-25 → 2017-11-28 10:20 (+34d) | 2017-10-25 → 2017-12-04 10:20 (+40d) | 1d? → 4d | none → 51.9d | none → 43 | resources none → Céline [30%] |
| 45 | Ajouter la gestion de l'appareil photo | 2017-10-25 → 2017-12-04 10:20 (+40d) | 2017-10-25 → 2017-12-05 10:20 (+41d) | 1d? → 1d | 48d → 51.9d | none → 44 | resources none → Céline [30%] |
| 46 | Extraction des données | 2017-10-25 → 2017-12-05 10:20 (+41d) | 2017-10-25 → 2017-12-14 10:20 (+50d) | 1d? → 7d | 48d → 51.9d | none → 45 | resources none → Céline [30%] |
| 47 | **Exploitation des données** | 2017-10-25 → 2017-11-27 15:20 (+33d) | 2017-10-25 → 2017-11-30 11:20 (+36d) | 1d? → 2.71d | 48d → 61.62d |  |  |
| 48 | Regular expression pour la date | 2017-10-25 → 2017-11-27 15:20 (+33d) | 2017-10-25 → 2017-11-28 09:20 (+34d) | 1d? → 3h | 48d → 61.62d |  | resources none → Céline [30%]; Michel [30%] |
| 49 | Régular expression pour l'adresse | 2017-10-25 → 2017-11-28 09:20 (+34d) | 2017-10-25 → 2017-11-28 14:20 (+34d) | 1d? → 3h | 48d → 61.62d | none → 48 | resources none → Céline [30%]; Michel [30%] |
| 50 | Regular expression d'unité | 2017-10-25 → 2017-11-28 14:20 (+34d) | 2017-10-25 → 2017-11-28 17:20 (+34d) | 1d? → 3h | 48d → 61.62d | none → 49 | resources none → Céline [30%]; Michel [30%] |
| 51 | Expression moyen de Paiement | 2017-10-25 → 2017-11-28 17:20 (+34d) | 2017-10-25 → 2017-11-29 11:20 (+35d) | 1d? → 3h | 48d → 61.62d | none → 50 | resources none → Céline [30%]; Michel [30%] |
| 52 | Tests | 2017-10-25 → 2017-11-29 11:20 (+35d) | 2017-10-25 → 2017-11-30 11:20 (+36d) | 1d? → 1d | 48d → 61.62d | none → 51 | resources none → Céline [30%]; Michel [30%] |
| 53 | Liaison avec la base de données | 2017-10-25 → 2017-11-30 11:20 (+36d) | 2017-10-25 → 2017-11-30 14:20 (+36d) | 1d? → 1h | none → 61.62d | none → 52 | resources none → Céline [30%] |
| 54 | Tests | 2017-10-25 → 2017-12-14 10:20 (+50d) | 2017-10-25 → 2017-12-14 17:20 (+50d) | 1d? → 5h | 48d → 51.9d | none → 43, 44, 45, 46, 47, 53 | resources none → Céline [30%]; Michel [30%] |
| 55 | **Recherche d'un lieu** | 2017-10-25 → 2017-12-14 17:20 (+50d) | 2017-10-25 → 2017-12-15 17:20 (+51d) | 1d? → 1d | 48d → 51.9d | none → 42 |  |
| 56 | Par adresse | 2017-10-25 → 2017-12-15 09:20 (+51d) | 2017-10-25 → 2017-12-15 10:20 (+51d) | 1d? → 1h | 48d → 51.9d | none → 57 | resources none → Céline [30%] |
| 57 | Par MAP | 2017-10-25 → 2017-12-14 17:20 (+50d) | 2017-10-25 → 2017-12-15 09:20 (+51d) | 1d? → 1h | 48d → 51.9d |  | resources none → Michel [30%]; Céline [30%] |
| 58 | Par gamme de prix (qui est le moins cher) | 2017-10-25 → 2017-12-15 10:20 (+51d) | 2017-10-25 → 2017-12-15 11:20 (+51d) | 1d? → 1h | 48d → 51.9d | none → 56 | resources none → Michel [30%] |
| 59 | Saisie d'un Avis | 2017-10-25 → 2017-12-15 14:20 (+51d) | 2017-10-25 → 2017-12-15 15:20 (+51d) | 1d? → 1h | 48d → 51.9d | none → 60 | resources none → Michel [30%] |
| 60 | Fiche description | 2017-10-25 → 2017-12-15 11:20 (+51d) | 2017-10-25 → 2017-12-15 14:20 (+51d) | 1d? → 1h | 48d → 51.9d | none → 58 | resources none → Céline [30%] |
| 61 | Tests | 2017-10-25 → 2017-12-15 15:20 (+51d) | 2017-10-25 → 2017-12-15 17:20 (+51d) | 1d? → 2h | 48d → 51.9d | none → 56, 57, 58, 59, 60 | resources none → Michel [30%]; Céline [30%] |
| 62 | **Recherche de produit** | 2017-10-25 → 2017-12-15 17:20 (+51d) | 2017-10-25 → 2017-12-19 15:20 (+55d) | 1d? → 1.71d | 48d → 51.9d | none → 55 |  |
| 63 | Par nom | 2017-10-25 → 2017-12-18 10:20 (+54d) | 2017-10-25 → 2017-12-18 14:20 (+54d) | 1d? → 2h | 48d → 51.9d | none → 67 | resources none → Céline [30%] |
| 64 | Par marque | 2017-10-25 → 2017-12-18 14:20 (+54d) | 2017-10-25 → 2017-12-18 16:20 (+54d) | 1d? → 0.29d | 48d → 51.9d | none → 63 | resources none → Céline [30%] |
| 65 | Par catégorie | 2017-10-25 → 2017-12-18 16:20 (+54d) | 2017-10-25 → 2017-12-19 09:20 (+55d) | 1d? → 0.29d | 48d → 51.9d | none → 64 | resources none → Céline [30%] |
| 66 | Saisie d'un Avis | 2017-10-25 → 2017-12-19 09:20 (+55d) | 2017-10-25 → 2017-12-19 11:20 (+55d) | 1d? → 0.29d | 48d → 51.9d | none → 65 | resources none → Michel [30%] |
| 67 | Fiche description | 2017-10-25 → 2017-12-15 17:20 (+51d) | 2017-10-25 → 2017-12-18 10:20 (+54d) | 1d? → 0.29d | 48d → 51.9d |  | resources none → Céline [30%] |
| 68 | Tests | 2017-10-25 → 2017-12-19 11:20 (+55d) | 2017-10-25 → 2017-12-19 15:20 (+55d) | 1d? → 2h | 48d → 51.9d | none → 66 | resources none → Céline [30%]; Michel [30%] |
| 69 | **Liste de course** | 2017-10-25 → 2017-12-19 15:20 (+55d) | 2017-10-25 → 2018-01-03 09:20 (+70d) | 1d? → 10.43d | 48d → 51.9d | none → 62 |  |
| 70 | Choix du lieu | 2017-10-25 → 2017-12-19 15:20 (+55d) | 2017-10-25 → 2017-12-19 17:20 (+55d) | 1d? → 2h | 48d → 51.9d |  | resources none → Michel [30%] |

| ID | Task | Start | Finish | Duration | Total float | Predecessors | Other |
| --- | --- | --- | --- | --- | --- | --- | --- |
| 71 | Proposition de lieu | 2017-10-25 → 2017-12-19 15:20 (+55d) | 2017-10-25 → 2017-12-19 17:20 (+55d) | 1d → 0.29d | 48d → 61.33d |  | resources none → Céline [30%] |
| 72 | **Ajout** | 2017-10-25 → 2017-12-19 17:20 (+55d) | 2017-10-25 → 2018-01-01 14:20 (+68d) | 1d? → 8.57d | 48d → 51.9d | none → 70 |  |
| 73 | Proposer des promotions | 2017-10-25 → 2017-12-19 17:20 (+55d) | 2017-10-25 → 2017-12-25 17:20 (+61d) | 1d? → 4d | 48d → 51.9d |  | resources none → Michel [30%] |
| 74 | Proposition des produits | 2017-10-25 → 2017-12-25 17:20 (+61d) | 2017-10-25 → 2017-12-29 17:20 (+65d) | 1d? → 4d | 48d → 51.9d | none → 73 | resources none → Michel [30%] |
| 75 | Choix du produit | 2017-10-25 → 2017-12-29 17:20 (+65d) | 2017-10-25 → 2018-01-01 10:20 (+68d) | 1d? → 2h | 48d → 51.9d | none → 74 | resources none → Céline [30%] |
| 76 | Lecture d'un avis | 2017-10-25 → 2018-01-01 10:20 (+68d) | 2017-10-25 → 2018-01-01 14:20 (+68d) | 1d? → 2h | 48d → 51.9d | none → 75 | resources none → Céline [30%] |
| 77 | Supression | 2017-10-25 → 2018-01-01 14:20 (+68d) | 2017-10-25 → 2018-01-01 16:20 (+68d) | 1d? → 2h | 48d → 52.48d | none → 72 | resources none → Céline [30%] |
| 78 | Quantité | 2017-10-25 → 2018-01-01 14:20 (+68d) | 2017-10-25 → 2018-01-01 16:20 (+68d) | 1d? → 0.29d | 48d → 52.48d | none → 72 | resources none → Céline [30%] |
| 79 | Enregistrer sous | 2017-10-25 → 2018-01-01 14:20 (+68d) | 2017-10-25 → 2018-01-01 16:20 (+68d) | 1d? → 0.29d | 48d → 51.9d | none → 72 | constraint none → finish no earlier than 2017-10-24 18:00; resources none → Céline [30%] |
| 81 | Définir une date | 2017-10-25 → 2018-01-01 16:20 (+68d) | 2017-10-25 → 2018-01-02 09:20 (+69d) | 1d? → 0.29d | 48d → 51.9d | none → 79 | resources none → Céline [30%] |
| 82 | Programmer une alerte | 2017-10-25 → 2018-01-02 09:20 (+69d) | 2017-10-25 → 2018-01-02 11:20 (+69d) | 1d? → 0.29d | 48d → 51.9d | none → 81 | resources none → Michel [30%] |
| 83 | Prix total | 2017-10-25 → 2017-12-19 15:20 (+55d) | 2017-10-25 → 2017-12-19 17:20 (+55d) | 1d? → 0.29d | 48d → 61.33d |  | resources none → Céline [30%] |
| 84 | Tests | 2017-10-25 → 2018-01-02 11:20 (+69d) | 2017-10-25 → 2018-01-03 09:20 (+70d) | 1d? → 5h | 48d → 51.9d | none → 70, 71, 72, 73, 74, 75, 76, 77, 78, 79, 80, 81, 82, 83 | resources none → Céline [30%]; Michel [30%] |
| 85 | Blocage d'un utilisateur | 2017-10-25 → 2018-01-03 09:20 (+70d) | 2017-10-25 → 2018-01-03 14:20 (+70d) | 1d? → 3h | 48d → 51.9d | none → 69 | resources none → Céline [30%] |
| 86 | Blocage d'une fonctionnalité | 2017-10-25 → 2018-01-03 14:20 (+70d) | 2017-10-25 → 2018-01-03 17:20 (+70d) | 1d? → 0.43d | 48d → 51.9d | none → 85 | resources none → Céline [30%] |
| 87 | Analyse de consomation | 2017-10-25 → 2018-01-03 09:20 (+70d) | 2017-10-25 → 2018-01-12 09:20 (+79d) | 1d? → 7d | 48d → 62.76d | none → 84 | resources none → Michel [30%] |
| 88 | Dépense par mois/annuel Catégorie | 2017-10-25 → 2018-01-03 17:20 (+70d) | 2017-10-25 → 2018-01-12 17:20 (+79d) | 1d? → 7d | 48d → 51.9d | none → 86 | resources none → Céline [30%]; Michel [30%] |
| 89 | Comparaison des promotions au mois | 2017-10-25 → 2018-01-12 17:20 (+79d) | 2017-10-25 → 2018-01-23 17:20 (+90d) | 1d? → 7d | 48d → 51.9d | none → 88 | resources none → Céline [30%]; Michel [30%] |
| 90 | Alerte produit | 2017-10-25 → 2018-01-23 17:20 (+90d) | 2017-10-25 → 2018-01-26 17:20 (+93d) | 1d? → 3d | 48d → 51.9d | none → 89 | resources none → Céline [30%] |
| 91 | Tests | 2017-10-25 → 2018-01-26 17:20 (+93d) | 2017-10-25 → 2018-01-30 17:20 (+97d) | 1d? → 2d | 48d → 51.9d | none → 85, 86, 87, 88, 89, 90 | resources none → Céline [30%]; Michel [30%] |
| 92 | Tests d'intégration | 2017-10-26 → 2018-01-30 17:20 (+96d) | 2017-10-26 → 2018-02-06 17:20 (+103d) | 1d? → 5d | 48d → 51.9d |  | resources none → Céline [30%]; Michel [30%] |
| 93 | Tests de validation | 2018-01-03 → 2018-04-19 10:50 (+106d) | 2018-01-03 → 2018-04-26 10:50 (+113d) | 1d? → 5d | 0d → 0.55d |  | resources none → Céline [30%]; Michel [30%] |
| 94 | Déploiement sur le store | 2018-01-04 → 2018-04-26 10:50 (+112d) | 2018-01-04 → 2018-04-26 11:50 (+112d) | 1d? → 1h | 0d → 0.55d |  | resources none → Céline [30%] |
| 95 | **Réalisation des cours** | 2017-10-24 → 2018-04-26 11:50 (+184d) | 2017-11-09 → 2018-06-07 09:10 (+210d) | 13d → 29.62d | 40d → 0d | none → 3, 2 |  |
| 96 | **Ecriture** | 2017-10-24 → 2018-04-26 11:50 (+184d) | 2017-11-02 → 2018-05-21 12:00 (+200d) | 8d → 17.02d | 40d → 0.55d |  |  |
| 97 | Java/Android | 2017-10-24 → 2018-04-26 11:50 (+184d) | 2017-11-01 → 2018-05-09 17:40 (+189d) | 7d → 9.24d | 1d → 8.02d |  |  |
| 98 | l'étude de cas | 2017-10-24 → 2018-04-26 11:50 (+184d) | 2017-11-02 → 2018-05-18 17:50 (+197d) | 8d → 13.62d | 40d → 1d |  |  |
| 99 | Librairie OpenCV | 2017-10-24 → 2018-04-26 11:50 (+184d) | 2017-10-26 → 2018-05-21 12:00 (+207d) |  | 5d → 0.55d |  |  |
| 100 | Les tests | 2017-10-24 → 2018-04-26 16:20 (+184d) | 2017-10-27 → 2018-05-11 14:50 (+196d) |  | 4d → 6.43d |  |  |
| 101 | **Relecture** | 2017-11-03 → 2018-05-21 14:00 (+199d) | 2017-11-03 → 2018-05-23 11:20 (+201d) | 1d → 1.9d | 40d → 0d |  |  |
| 102 | Java/Android | 2017-11-03 → 2018-05-21 14:00 (+199d) | 2017-11-03 → 2018-05-22 16:00 (+200d) | 1d → 1.29d | 40d → 0.62d |  |  |
| 103 | l'étude de cas | 2017-11-03 → 2018-05-21 17:50 (+199d) | 2017-11-03 → 2018-05-23 10:50 (+201d) | 1d → 1.29d | 40d → 0.07d |  |  |
| 104 | Librairie OpenCV | 2017-11-03 → 2018-05-21 17:50 (+199d) | 2017-11-03 → 2018-05-23 11:20 (+201d) |  | 40d → 0d |  |  |
| 105 | Les tests | 2017-11-03 → 2018-05-22 09:00 (+200d) | 2017-11-03 → 2018-05-22 18:00 (+200d) |  | 40d → 0.33d |  |  |
| 106 | **Mise en commun** | 2017-11-06 → 2018-05-23 11:20 (+198d) | 2017-11-06 → 2018-05-25 11:20 (+200d) | 1d → 2d | 40d → 0d |  |  |
| 107 | Java/Android | 2017-11-06 → 2018-05-23 11:20 (+198d) | 2017-11-06 → 2018-05-24 11:20 (+199d) |  | 40d → 1d |  |  |
| 108 | l'étude de cas | 2017-11-06 → 2018-05-23 11:20 (+198d) | 2017-11-06 → 2018-05-25 11:10 (+200d) | 1d → 1.98d | 40d → 0.02d |  |  |
| 109 | Librairie OpenCV | 2017-11-06 → 2018-05-23 11:20 (+198d) | 2017-11-06 → 2018-05-25 11:20 (+200d) | 1d → 1.02d | 40d → 0d |  |  |
| 110 | Les tests | 2017-11-06 → 2018-05-23 11:20 (+198d) | 2017-11-06 → 2018-05-25 11:20 (+200d) | 1d → 1.02d | 40d → 0d |  |  |
| 111 | **Ajustement** | 2017-11-07 → 2018-05-25 11:20 (+199d) | 2017-11-08 → 2018-06-05 09:10 (+209d) | 2d → 6.69d | 40d → 0d |  |  |
| 112 | Java/Android | 2017-11-07 → 2018-05-25 11:20 (+199d) | 2017-11-08 → 2018-05-29 11:20 (+202d) |  | 40d → 4.69d |  |  |
| 113 | l'étude de cas | 2017-11-07 → 2018-05-25 11:20 (+199d) | 2017-11-08 → 2018-05-31 10:40 (+204d) | 2d → 3.9d | 40d → 2.79d |  |  |
| 114 | Librairie OpenCV | 2017-11-07 → 2018-05-25 11:20 (+199d) | 2017-11-08 → 2018-06-04 09:50 (+208d) | 2d → 3.9d | 40d → 0.9d |  |  |
| 115 | Les tests | 2017-11-07 → 2018-05-25 11:20 (+199d) | 2017-11-08 → 2018-06-05 09:10 (+209d) | 2d → 3.9d | 40d → 0d |  |  |
| 116 | Essai de présentation | 2017-11-09 → 2018-06-05 09:10 (+208d) | 2017-11-09 → 2018-06-06 09:10 (+209d) |  | 40d → 0d |  |  |
| 117 | Formation des clients finaux | 2017-10-24 → 2018-06-06 09:10 (+225d) | 2017-10-24 → 2018-06-07 09:10 (+226d) |  | 52d → 0d | none → 116 |  |

## Version 4 (saved 2017-11-23, file GANTT_Formation_V2.mpp)

Note of the change: maj conforme

Last finish stays 2018-06-07.

Changed:

| ID | Task | Start | Complete |
| --- | --- | --- | --- |
| 1 | **Formation Android** | 2017-10-24 09:00 A | 0% → 9% |
| 2 | **Etude de cas** | 2017-10-24 09:00 A | 0% → 11% |
| 3 | Analyse du besoin | 2017-10-24 09:00 A | 0% → 94% |

## Version 5 (saved 2017-11-23, file GANTT_Formation_V2.mpp)

Note of the change: maj

Last finish stays 2018-06-07. Complete tasks 0 → 17.

Changed:

| ID | Task | Start | Finish | Complete | Total float |
| --- | --- | --- | --- | --- | --- |
| 1 | **Formation Android** |  |  | 9% → 10% |  |
| 2 | **Etude de cas** |  |  | 11% → 13% |  |
| 4 | **Réalisation** | 2017-11-24 11:20 A |  | 0% → 2% |  |
| 5 | **Mise en place de la Base Données** | 2017-11-24 11:20 A |  | 0% → 53% |  |
| 7 | Réalisation du schéma de Base de données | 2017-11-24 11:30 A | 2017-11-27 11:30 A | 0% → 100% | 0.55d → none |
| 15 | **Mise en place de l'appilcation mobile** | 2017-11-24 11:20 A |  | 0% → 3% | 1.36d → 51.9d |
| 16 | **Réalisation des maquettes de l'application** | 2017-11-24 11:20 A |  | 0% → 93% |  |
| 17 | **Définition de la charte Graphique** | 2017-11-24 11:20 A | 2017-11-24 11:50 A | 0% → 100% | 1.36d → none |
| 18 | Choix des couleurs | 2017-11-24 11:20 A | 2017-11-24 11:30 A | 0% → 100% | 1.36d → none |
| 19 | Choix de la police de caractère | 2017-11-24 11:30 A | 2017-11-24 11:40 A | 0% → 100% | 1.36d → none |
| 20 | Choix de l'icone de l'application | 2017-11-24 11:40 A | 2017-11-24 11:50 A | 0% → 100% | 1.36d → none |
| 21 | **Réalisation des Mockup correspondant à chaque Activity** | 2017-11-24 11:50 A |  | 0% → 93% |  |
| 22 | Inscription | 2017-11-24 11:50 A | 2017-11-24 14:50 A | 0% → 100% | 1.36d → none |
| 23 | Connexion | 2017-11-24 14:50 A | 2017-11-24 15:50 A | 0% → 100% | 1.36d → none |
| 24 | Recherche de lieu | 2017-11-24 15:50 A | 2017-11-24 16:50 A | 0% → 100% | 1.36d → none |
| 25 | Recherche de produit | 2017-11-24 11:50 A | 2017-11-24 14:50 A | 0% → 100% | 1.36d → none |
| 26 | Recherche par catégorie | 2017-11-24 14:50 A | 2017-11-24 15:50 A | 0% → 100% | 1.36d → none |
| 27 | Saisie d'avis | 2017-11-24 16:50 A | 2017-11-24 17:50 A | 0% → 100% | 1.36d → none |
| 28 | Fiche description produit | 2017-11-24 15:50 A | 2017-11-24 16:50 A | 0% → 100% | 1.36d → none |
| 29 | Fiche description lieu | 2017-11-24 16:50 A | 2017-11-24 17:50 A | 0% → 100% | 1.36d → none |
| 30 | Numériseur de ticket | 2017-11-24 17:50 A | 2017-11-27 09:50 A | 0% → 100% | 1.36d → none |
| 31 | Liste de course | 2017-11-27 09:50 A | 2017-11-27 10:50 A | 0% → 100% | 1.36d → none |
| 32 | Recherche d'utilisateur | 2017-11-24 17:50 A | 2017-11-27 09:50 A | 0% → 100% | 1.36d → none |
| 33 | Blocage d'utilisateur | 2017-11-27 09:50 A | 2017-11-27 10:50 A | 0% → 100% | 1.36d → none |
| 34 | Blocage de fonctionnalité | 2017-11-27 10:50 A | 2017-11-27 11:50 A | 0% → 100% | 1.36d → none |

## Version 6 (saved 2017-12-15, file GANTT_Formation_V2.mpp)

Note of the change: code

Last finish stays 2018-06-07. Complete tasks 17 → 23.

Changed:

| ID | Task | Start | Finish | Complete | Total float |
| --- | --- | --- | --- | --- | --- |
| 1 | **Formation Android** |  |  | 10% → 12% |  |
| 2 | **Etude de cas** |  |  | 13% → 15% | 0.55d → 0d |
| 3 | Analyse du besoin |  | 2017-11-24 11:20 A | 94% → 100% | 0d → none |
| 4 | **Réalisation** |  |  | 2% → 4% | 0.55d → 0d |
| 5 | **Mise en place de la Base Données** |  |  | 53% → 85% | 0.55d → 0d |
| 6 | Choix du SGBD | 2017-11-24 11:20 A | 2017-11-24 11:30 A | 0% → 100% | 0.55d → none |
| 8 | Création de la Base de données | 2017-11-27 11:30 A | 2017-11-27 16:30 A | 0% → 100% | 0.55d → none |
| 9 | Configuration des accès à la Base de données | 2017-11-27 16:30 A | 2017-11-27 17:30 A | 0% → 100% | 0.55d → none |
| 11 | **Mise en place du Back end** | 2017-11-28 10:30 A |  | 0% → 1% | 0.55d → 0d |
| 12 | Choix du Langage de programation | 2017-11-28 10:30 A |  | 0% → 50% | 0.55d → 1d |
| 13 | Choix de l'architecture | 2017-11-28 10:50 A |  | 0% → 50% | 0.55d → 0d |
| 15 | **Mise en place de l'appilcation mobile** |  |  | 3% → 7% | 51.9d → 51.36d |
| 36 | **Réalisation des fonctions** | 2017-11-24 11:20 A |  | 0% → 5% | 51.9d → 51.36d |
| 37 | **Inscription de l'utilisateur** | 2017-11-24 11:20 A |  | 0% → 30% | 51.9d → 0d |
| 38 | Formulaire | 2017-11-24 11:20 A |  | 0% → 90% | 51.9d → 0d |
| 42 | **Numériser un ticket de caisse** | 2017-11-27 15:20 A |  | 0% → 16% | 51.9d → 51.36d |
| 43 | Ajouter la librairie OpenCV | 2017-11-27 15:20 A | 2017-11-28 10:20 A | 0% → 100% | 51.9d → none |
| 44 | Prise en main de la librairie | 2017-11-28 10:20 A |  | 0% → 25% | 51.9d → 59.36d |
| 45 | Ajouter la gestion de l'appareil photo | 2017-12-04 10:20 A | 2017-12-05 10:20 A | 0% → 100% | 51.9d → none |
| 95 | **Réalisation des cours** | 2018-04-26 11:50 A |  | 0% → 1% |  |
| 101 | **Relecture** | 2018-05-21 14:00 A |  | 0% → 6% |  |
| 102 | Java/Android | 2018-05-21 14:00 A |  | 0% → 5% |  |
| 103 | l'étude de cas | 2018-05-21 17:50 A |  | 0% → 5% |  |
| 104 | Librairie OpenCV | 2018-05-21 17:50 A |  | 0% → 5% |  |
| 105 | Les tests | 2018-05-22 09:00 A |  | 0% → 10% |  |

## Version 7 (saved 2017-12-21, file GANTT_Formation_V2.mpp)

Note of the change: googleMap

Last finish stays 2018-06-07.

Changed:

| ID | Task | Start | Complete | Total float |
| --- | --- | --- | --- | --- |
| 2 | **Etude de cas** |  | 15% → 16% |  |
| 55 | **Recherche d'un lieu** | 2017-12-14 17:20 A | 0% → 9% |  |
| 57 | Par MAP | 2017-12-14 17:20 A | 0% → 60% | 51.9d → 51.36d |
